# ProjectPlan-ProgotiSystems-AgraniSchoolPaymentManagement-V-1.0

How a schedule from MS Project changed from version to version. A marks actual dates.

## Version 1 (saved 2012-12-23, file ProjectPlan-ProgotiSystems-AgraniSchoolPaymentManagement-V-1.0.mpp)

| ID | WBS | Task | Duration | Start | Finish | Predecessors | Complete | Total float | Constraint |
| --- | --- | --- | --- | --- | --- | --- | --- | --- | --- |
| 1 | 1 | **Agrani School Payment Management System** | 46d | 2012-12-01 A | 2013-02-06 |  | 20% | 0d |  |
| 2 |  | Initiate project & preparation | 3d | 2012-12-01 A | 2012-12-04 A |  | 100% |  | start no earlier than 2012-12-05 |
| 3 |  | Domain creation & Database schema generation | 4d | 2012-12-05 A | 2012-12-10 A | 2 | 100% |  |  |
| 4 |  | Academic Year/Session Management | 1d | 2012-12-11 A | 2012-12-11 A | 3 | 100% |  |  |
| 5 |  | School Management | 1d | 2012-12-12 A | 2012-12-12 A | 4 | 100% |  |  |
| 6 |  | User Group Management | 1d | 2013-01-03 | 2013-01-06 | 20 |  | 22.52d |  |
| 7 | 1.6 | **User Management** | 5.62d | 2012-12-13 A | 2012-12-23 |  | 38% | 9.5d |  |
| 8 |  | Tuneup view | 3h | 2012-12-23 | 2012-12-23 | 23 |  | 9.5d | start no earlier than 2012-12-23 |
| 9 |  | Controller | 3h | 2012-12-13 A | 2012-12-13 A | 5 | 100% |  |  |
| 10 |  | User Service | 2h | 2012-12-23 | 2012-12-23 | 8 |  | 9.5d |  |
| 11 | 1.7 | **Authority(Role) Management** | 6.62d | 2012-12-13 A | 2012-12-24 |  | 38% | 9.12d |  |
| 12 |  | View creation | 3h | 2012-12-24 | 2012-12-24 | 10 |  | 9.12d | start no earlier than 2012-12-24 |
| 13 |  | Controller | 3h | 2012-12-13 A | 2012-12-13 A | 9 | 100% |  |  |
| 14 |  | Service | 2h | 2012-12-24 | 2012-12-24 | 12 |  | 9.12d |  |
| 15 |  | Authority Assignment | 2h | 2012-12-24 | 2012-12-24 | 11, 7 |  | 9.12d |  |
| 16 |  | Feature Management | 2d | 2012-12-24 | 2012-12-27 | 2, 3, 15 |  | 9.12d |  |
| 17 |  | Feature Assigment | 2d | 2012-12-27 | 2012-12-31 | 16 |  | 9.12d |  |
| 18 |  | Class Management | 4h | 2012-12-17 A | 2012-12-17 A | 13 | 100% |  |  |
| 19 |  | Section Management | 3h | 2012-12-18 A | 2012-12-18 A | 18 | 100% |  |  |
| 20 |  | Subject Group management | 1d | 2013-01-02 | 2013-01-03 | 25 |  | 22.52d |  |
| 21 | 1.14 | **Fees Profile Management** | 11.47d | 2012-12-17 A | 2013-01-02 |  | 54% | 22.52d |  |
| 22 |  | Fees Type | 4h | 2012-12-19 A | 2012-12-19 A | 19 | 100% |  |  |
| 23 |  | Fees Rule | 4h | 2012-12-19 A | 2012-12-19 A | 22 | 100% |  |  |
| 24 |  | Fees Profile | 4h | 2012-12-20 A | 2012-12-20 A | 23 | 100% |  |  |
| 25 |  | Fees Profile Allocation | 2d | 2012-12-17 A | 2013-01-02 | 28 | 20% | 22.52d |  |
| 26 | 1.15 | **Student Management** | 11d | 2012-12-24 | 2013-01-09 |  |  | 9.12d |  |
| 27 |  | Student Registration | 2d | 2012-12-24 | 2012-12-27 | 15 |  | 9.12d |  |
| 28 |  | Class,Section,Fees Profile assignment | 2d | 2012-12-27 | 2012-12-31 | 27 |  | 9.12d |  |
| 29 | 1.15.3 | **Migration** | 7d | 2012-12-31 | 2013-01-09 |  |  | 9.12d |  |
| 30 |  | Individual Student migration | 2d | 2012-12-31 | 2013-01-02 | 17, 28 |  | 9.12d |  |
| 31 |  | Groupwise migration | 5d | 2013-01-02 | 2013-01-09 | 30 |  | 9.12d |  |
| 32 | 1.16 | **RESTFul Webservice Management** | 13d | 2012-12-18 A | 2013-01-06 |  | 23% | 0d |  |
| 33 |  | Setup project and Preparation | 3d | 2012-12-18 A | 2012-12-20 A |  | 100% |  | start no earlier than 2012-12-18 |
| 34 |  | Webservice for tuition fees payment | 2d | 2012-12-23 | 2012-12-24 | 33 |  | 0d |  |
| 35 |  | Web service for other fees payment | 1d | 2012-12-26 | 2012-12-26 | 34 |  | 0d |  |
| 36 |  | Fine management | 2d | 2012-12-27 | 2012-12-30 | 35 |  | 0d |  |
| 37 |  | Web service for external component / transaction report | 5d | 2012-12-31 | 2013-01-06 | 36 |  | 0d |  |
| 38 | 1.17 | **Dashboard management** | 15d | 2013-01-16 | 2013-02-06 |  |  | 0d |  |
| 39 |  | CSS & Layout Management | 3d | 2013-01-16 | 2013-01-20 | 49 |  | 0d |  |
| 40 |  | Admin dashboard amanagement | 2d | 2013-01-22 | 2013-01-23 | 39 |  | 0d |  |
| 41 |  | Teacher & Employee Dashboard | 2d | 2013-01-24 | 2013-01-27 | 40 |  | 0d |  |
| 42 |  | Clerk dashboard | 1d | 2013-01-28 | 2013-01-28 | 41 |  | 0d |  |
| 43 |  | Generic Dashboard | 4d | 2013-01-29 | 2013-02-03 | 42 |  | 0d |  |
| 44 |  | Dashboard Customization | 3d | 2013-02-04 | 2013-02-06 | 43 |  | 0d |  |
| 45 | 1.18 | **Reports** | 7d | 2013-01-07 | 2013-01-15 |  |  | 0d |  |
| 46 |  | Generic Report based on Group,Section,Class,Student, fees type and duration | 4d | 2013-01-07 | 2013-01-10 | 37 |  | 0d |  |
| 47 |  | Monthwise fees collection report | 1d | 2013-01-13 | 2013-01-13 | 46 |  | 0d |  |
| 48 |  | Monthwise due report | 1d | 2013-01-14 | 2013-01-14 | 47 |  | 0d |  |
| 49 |  | Student Registration Report | 1d | 2013-01-15 | 2013-01-15 | 48 |  | 0d |  |
| 50 |  | Design customization & CSS Implementation | 10d | 2013-01-09 | 2013-01-24 | 31 |  | 9.12d |  |

## Version 2 (data date 2012-12-23, saved 2012-12-26, file ProjectPlan-ProgotiSystems-AgraniSchoolPaymentManagement-V-1.1.mpp)

Last finish stays 2013-02-06. Complete tasks 12 → 22.

Added:

| ID | Task | Duration | Start | Finish | Predecessors | Resources |
| --- | --- | --- | --- | --- | --- | --- |
| 2 | **Web Apps** | 26.88d | 2012-12-01 09:00 A | 2013-01-09 17:00 |  |  |
| 52 | **Testing** | 19.75d | 2012-12-24 17:00 | 2013-01-23 15:00 |  |  |
| 53 | **Prepare Test Cases** | 19.75d | 2012-12-24 17:00 | 2013-01-23 15:00 |  |  |
| 54 | **Prepare Test Case for ACL** | 1.75d | 2012-12-24 17:00 | 2012-12-27 15:00 |  |  |
| 55 | Test case for User | 3h | 2012-12-24 17:00 | 2012-12-26 11:00 | 16 | Kajjal Rekha |
| 56 | Test case for Authority | 3h | 2012-12-26 11:00 | 2012-12-26 15:00 | 55 | Kajjal Rekha |
| 57 | Test Case for login & authentication | 1d | 2012-12-26 15:00 | 2012-12-27 15:00 | 56 | Kajjal Rekha |
| 58 | **Prepare Test Case for School Management** | 2d | 2012-12-30 15:00 | 2013-01-01 15:00 |  |  |
| 59 | Test case for academic year/session | 1h | 2012-12-30 15:00 | 2012-12-30 16:00 | 79 | Kajjal Rekha |
| 60 | Test Case for School | 2h | 2012-12-30 16:00 | 2012-12-30 18:00 | 59 | Kajjal Rekha |
| 61 | Test Case for Fees profile | 5h | 2012-12-31 09:00 | 2012-12-31 15:00 | 60 | Kajjal Rekha |
| 62 | Test Case for Student Registration | 1d | 2012-12-31 15:00 | 2013-01-01 15:00 | 61 | Kajjal Rekha |
| 63 | **Prepare Test Cases for Web Service** | 3d | 2013-01-03 15:00 | 2013-01-08 15:00 |  |  |
| 64 | Test Case for Tuition fees web service | 1d | 2013-01-03 15:00 | 2013-01-06 15:00 | 80 | Kajjal Rekha |
| 65 | Test Case for Exam fee & other web service | 1d | 2013-01-06 15:00 | 2013-01-07 15:00 | 64 | Kajjal Rekha |
| 66 | Test Case for external usagable web service | 1d | 2013-01-07 15:00 | 2013-01-08 15:00 | 65 | Kajjal Rekha |
| 67 | **Prepare Test Case for reports** | 1d | 2013-01-08 15:00 | 2013-01-09 15:00 |  |  |
| 68 | Test Case for generic reports | 3h | 2013-01-08 15:00 | 2013-01-08 18:00 | 66 | Kajjal Rekha |
| 69 | Test case for teacher wise reports | 2h | 2013-01-09 09:00 | 2013-01-09 11:00 | 68 | Kajjal Rekha |
| 70 | Test Case for Student Registration Report | 3h | 2013-01-09 11:00 | 2013-01-09 15:00 | 69 | Kajjal Rekha |
| 71 | **Prepare Test Case for Dashboard** | 4d | 2013-01-09 15:00 | 2013-01-15 15:00 |  |  |
| 72 | Test Case for Admin Dashboard | 3h | 2013-01-09 15:00 | 2013-01-09 18:00 | 70 | Kajjal Rekha |
| 73 | Test Case for Teacher Dashboard | 3h | 2013-01-10 09:00 | 2013-01-10 12:00 | 72 | Kajjal Rekha |
| 74 | Test Case for Clerk Dahsboard | 2h | 2013-01-10 12:00 | 2013-01-10 15:00 | 73 | Kajjal Rekha |
| 75 | Test Case for Generic Dashboard | 1d | 2013-01-10 15:00 | 2013-01-13 15:00 | 74 | Kajjal Rekha |
| 76 | Test Case for Dashboard customization | 2d | 2013-01-13 15:00 | 2013-01-15 15:00 | 75 | Kajjal Rekha |
| 77 | Prepare Test Case for User Interface | 5d | 2013-01-15 15:00 | 2013-01-23 15:00 | 76 | Kajjal Rekha |
| 78 | **Perform Test for Phase** | 14d | 2012-12-27 15:00 | 2013-01-16 15:00 |  |  |
| 79 | Perform Test for ACL | 1d | 2012-12-27 15:00 | 2012-12-30 15:00 | 54 | Kajjal Rekha |
| 80 | Perform Test for School Management | 2d | 2013-01-01 15:00 | 2013-01-03 15:00 | 58 | Kajjal Rekha |
| 81 | Perform Test for Web Service | 3d | 2013-01-08 15:00 | 2013-01-13 15:00 | 63 | Nabila Nujhat |
| 82 | Perform Test For report | 3d | 2013-01-13 15:00 | 2013-01-16 15:00 | 67, 81 | Nabila Nujhat |

Changed:

| ID | Task | Start | Finish | Complete | Total float | Other |
| --- | --- | --- | --- | --- | --- | --- |
| 1 | **Agrani School Payment Management System** | 2012-12-01 A → 2012-12-01 09:00 A | 2013-02-06 → 2013-02-06 18:00 | 20% → 28% |  | baseline start none → 2012-12-01 09:00; baseline finish none → 2013-02-06 18:00 |
| 3 | Initiate project & preparation | 2012-12-01 A → 2012-12-01 09:00 A | 2012-12-04 A → 2012-12-04 18:00 A |  |  | constraint start no earlier than 2012-12-05 → start no earlier than 2012-12-05 09:00; baseline start none → 2012-12-01 09:00; baseline finish none → 2012-12-04 18:00 |
| 4 | Domain creation & Database schema generation | 2012-12-05 A → 2012-12-05 09:00 A | 2012-12-10 A → 2012-12-10 18:00 A |  |  | baseline start none → 2012-12-05 09:00; baseline finish none → 2012-12-10 18:00 |
| 5 | Academic Year/Session Management | 2012-12-11 A → 2012-12-11 09:00 A | 2012-12-11 A → 2012-12-11 18:00 A |  |  | baseline start none → 2012-12-11 09:00; baseline finish none → 2012-12-11 18:00 |
| 6 | School Management | 2012-12-12 A → 2012-12-12 09:00 A | 2012-12-12 A → 2012-12-12 18:00 A |  |  | baseline start none → 2012-12-12 09:00; baseline finish none → 2012-12-12 18:00 |
| 7 | User Group Management | 2013-01-03 → 2013-01-03 12:48 A | 2013-01-06 → 2013-01-06 12:48 A | 0% → 100% | 22.52d → none | baseline start none → 2013-01-03 12:48; baseline finish none → 2013-01-06 12:48 |
| 8 | **User Management** | 2012-12-13 A → 2012-12-13 09:00 A | 2012-12-23 → 2012-12-23 15:00 A | 38% → 100% | 9.5d → none | baseline start none → 2012-12-13 09:00; baseline finish none → 2012-12-23 15:00 |
| 9 | Tuneup view | 2012-12-23 → 2012-12-23 09:00 A | 2012-12-23 → 2012-12-23 12:00 A | 0% → 100% | 9.5d → none | constraint start no earlier than 2012-12-23 → start no earlier than 2012-12-23 09:00; baseline start none → 2012-12-23 09:00; baseline finish none → 2012-12-23 12:00 |
| 10 | Controller | 2012-12-13 A → 2012-12-13 09:00 A | 2012-12-13 A → 2012-12-13 12:00 A |  |  | baseline start none → 2012-12-13 09:00; baseline finish none → 2012-12-13 12:00 |
| 11 | User Service | 2012-12-23 → 2012-12-23 12:00 A | 2012-12-23 → 2012-12-23 15:00 A | 0% → 100% | 9.5d → none | baseline start none → 2012-12-23 12:00; baseline finish none → 2012-12-23 15:00 |
| 12 | **Authority(Role) Management** | 2012-12-13 A → 2012-12-13 09:00 A | 2012-12-24 → 2012-12-24 15:00 | 38% → 75% |  | baseline start none → 2012-12-13 09:00; baseline finish none → 2012-12-24 15:00 |
| 13 | View creation | 2012-12-24 → 2012-12-24 09:00 A | 2012-12-24 → 2012-12-24 12:00 A | 0% → 100% | 9.12d → none | constraint start no earlier than 2012-12-24 → start no earlier than 2012-12-24 09:00; baseline start none → 2012-12-24 09:00; baseline finish none → 2012-12-24 12:00 |
| 14 | Controller | 2012-12-13 A → 2012-12-13 09:00 A | 2012-12-13 A → 2012-12-13 12:00 A |  |  | baseline start none → 2012-12-13 09:00; baseline finish none → 2012-12-13 12:00 |
| 15 | Service | 2012-12-24 → 2012-12-24 12:00 | 2012-12-24 → 2012-12-24 15:00 |  |  | baseline start none → 2012-12-24 12:00; baseline finish none → 2012-12-24 15:00 |
| 16 | Authority Assignment | 2012-12-24 → 2012-12-24 15:00 A | 2012-12-24 → 2012-12-24 17:00 A | 0% → 100% | 9.12d → none | baseline start none → 2012-12-24 15:00; baseline finish none → 2012-12-24 17:00 |
| 17 | Feature Management | 2012-12-24 → 2012-12-24 17:00 A | 2012-12-27 → 2012-12-27 17:00 A | 0% → 100% | 9.12d → none | baseline start none → 2012-12-24 17:00; baseline finish none → 2012-12-27 17:00 |
| 18 | Feature Assigment | 2012-12-27 → 2012-12-27 17:00 A | 2012-12-31 → 2012-12-31 17:00 A | 0% → 100% | 9.12d → none | baseline start none → 2012-12-27 17:00; baseline finish none → 2012-12-31 17:00 |
| 19 | Class Management | 2012-12-17 A → 2012-12-17 09:00 A | 2012-12-17 A → 2012-12-17 13:00 A |  |  | baseline start none → 2012-12-17 09:00; baseline finish none → 2012-12-17 13:00 |
| 20 | Section Management | 2012-12-18 A → 2012-12-18 09:00 A | 2012-12-18 A → 2012-12-18 12:00 A |  |  | baseline start none → 2012-12-18 09:00; baseline finish none → 2012-12-18 12:00 |
| 21 | Subject Group management | 2013-01-02 → 2013-01-02 12:48 | 2013-01-03 → 2013-01-03 12:48 |  | 22.52d → 23.52d | baseline start none → 2013-01-02 12:48; baseline finish none → 2013-01-03 12:48 |
| 22 | **Fees Profile Management** | 2012-12-17 A → 2012-12-17 09:00 A | 2013-01-02 → 2013-01-02 12:48 A | 54% → 100% | 22.52d → none | baseline start none → 2012-12-17 09:00; baseline finish none → 2013-01-02 12:48 |
| 23 | Fees Type | 2012-12-19 A → 2012-12-19 09:00 A | 2012-12-19 A → 2012-12-19 13:00 A |  |  | baseline start none → 2012-12-19 09:00; baseline finish none → 2012-12-19 13:00 |
| 24 | Fees Rule | 2012-12-19 A → 2012-12-19 09:00 A | 2012-12-19 A → 2012-12-19 13:00 A |  |  | baseline start none → 2012-12-19 09:00; baseline finish none → 2012-12-19 13:00 |
| 25 | Fees Profile | 2012-12-20 A → 2012-12-20 09:00 A | 2012-12-20 A → 2012-12-20 13:00 A |  |  | baseline start none → 2012-12-20 09:00; baseline finish none → 2012-12-20 13:00 |
| 26 | Fees Profile Allocation | 2012-12-17 A → 2012-12-17 09:00 A | 2013-01-02 → 2013-01-02 12:48 A | 20% → 100% | 22.52d → none | baseline start none → 2012-12-17 09:00; baseline finish none → 2013-01-02 12:48 |
| 27 | **Student Management** | 2012-12-24 → 2012-12-24 17:00 A | 2013-01-09 → 2013-01-09 17:00 | 0% → 36% |  | baseline start none → 2012-12-24 17:00; baseline finish none → 2013-01-09 17:00 |
| 28 | Student Registration | 2012-12-24 → 2012-12-24 17:00 A | 2012-12-27 → 2012-12-27 17:00 A | 0% → 100% | 9.12d → none | baseline start none → 2012-12-24 17:00; baseline finish none → 2012-12-27 17:00 |
| 29 | Class,Section,Fees Profile assignment | 2012-12-27 → 2012-12-27 17:00 A | 2012-12-31 → 2012-12-31 17:00 A | 0% → 100% | 9.12d → none | baseline start none → 2012-12-27 17:00; baseline finish none → 2012-12-31 17:00 |
| 30 | **Migration** | 2012-12-31 → 2012-12-31 17:00 | 2013-01-09 → 2013-01-09 17:00 |  |  | baseline start none → 2012-12-31 17:00; baseline finish none → 2013-01-09 17:00 |
| 31 | Individual Student migration | 2012-12-31 → 2012-12-31 17:00 | 2013-01-02 → 2013-01-02 17:00 |  |  | baseline start none → 2012-12-31 17:00; baseline finish none → 2013-01-02 17:00 |
| 32 | Groupwise migration | 2013-01-02 → 2013-01-02 17:00 | 2013-01-09 → 2013-01-09 17:00 |  |  | baseline start none → 2013-01-02 17:00; baseline finish none → 2013-01-09 17:00 |
| 33 | **RESTFul Webservice Management** | 2012-12-18 A → 2012-12-18 09:00 A | 2013-01-06 → 2013-01-06 18:00 | 23% → 38% |  | baseline start none → 2012-12-18 09:00; baseline finish none → 2013-01-06 18:00 |
| 34 | Setup project and Preparation | 2012-12-18 A → 2012-12-18 09:00 A | 2012-12-20 A → 2012-12-20 18:00 A |  |  | constraint start no earlier than 2012-12-18 → start no earlier than 2012-12-18 09:00; baseline start none → 2012-12-18 09:00; baseline finish none → 2012-12-20 18:00 |
| 35 | Webservice for tuition fees payment | 2012-12-23 → 2012-12-23 09:00 A | 2012-12-24 → 2012-12-24 18:00 | 0% → 50% | 0d → 0.9d | baseline start none → 2012-12-23 09:00; baseline finish none → 2012-12-24 18:00 |
| 36 | Web service for other fees payment | 2012-12-26 → 2012-12-26 09:00 A | 2012-12-26 → 2012-12-26 18:00 | 0% → 40% | 0d → 0.5d | baseline start none → 2012-12-26 09:00; baseline finish none → 2012-12-26 18:00 |
| 37 | Fine management | 2012-12-27 → 2012-12-27 09:00 A | 2012-12-30 → 2012-12-30 18:00 | 0% → 25% |  | baseline start none → 2012-12-27 09:00; baseline finish none → 2012-12-30 18:00 |
| 38 | Web service for external component / transaction report | 2012-12-31 → 2012-12-31 09:00 | 2013-01-06 → 2013-01-06 18:00 |  |  | baseline start none → 2012-12-31 09:00; baseline finish none → 2013-01-06 18:00 |
| 39 | **Dashboard management** | 2013-01-16 → 2013-01-16 09:00 | 2013-02-06 → 2013-02-06 18:00 |  |  | baseline start none → 2013-01-16 09:00; baseline finish none → 2013-02-06 18:00 |
| 40 | CSS & Layout Management | 2013-01-16 → 2013-01-16 09:00 | 2013-01-20 → 2013-01-20 18:00 |  |  | baseline start none → 2013-01-16 09:00; baseline finish none → 2013-01-20 18:00 |
| 41 | Admin dashboard amanagement | 2013-01-22 → 2013-01-22 09:00 | 2013-01-23 → 2013-01-23 18:00 |  |  | baseline start none → 2013-01-22 09:00; baseline finish none → 2013-01-23 18:00 |
| 42 | Teacher & Employee Dashboard | 2013-01-24 → 2013-01-24 09:00 | 2013-01-27 → 2013-01-27 18:00 |  |  | baseline start none → 2013-01-24 09:00; baseline finish none → 2013-01-27 18:00 |
| 43 | Clerk dashboard | 2013-01-28 → 2013-01-28 09:00 | 2013-01-28 → 2013-01-28 18:00 |  |  | baseline start none → 2013-01-28 09:00; baseline finish none → 2013-01-28 18:00 |
| 44 | Generic Dashboard | 2013-01-29 → 2013-01-29 09:00 | 2013-02-03 → 2013-02-03 18:00 |  |  | baseline start none → 2013-01-29 09:00; baseline finish none → 2013-02-03 18:00 |
| 45 | Dashboard Customization | 2013-02-04 → 2013-02-04 09:00 | 2013-02-06 → 2013-02-06 18:00 |  |  | baseline start none → 2013-02-04 09:00; baseline finish none → 2013-02-06 18:00 |
| 46 | **Reports** | 2013-01-07 → 2013-01-07 09:00 | 2013-01-15 → 2013-01-15 18:00 |  |  | baseline start none → 2013-01-07 09:00; baseline finish none → 2013-01-15 18:00 |
| 47 | Generic Report based on Group,Section,Class,Student, fees type and duration | 2013-01-07 → 2013-01-07 09:00 | 2013-01-10 → 2013-01-10 18:00 |  |  | baseline start none → 2013-01-07 09:00; baseline finish none → 2013-01-10 18:00 |
| 48 | Monthwise fees collection report | 2013-01-13 → 2013-01-13 09:00 | 2013-01-13 → 2013-01-13 18:00 |  |  | baseline start none → 2013-01-13 09:00; baseline finish none → 2013-01-13 18:00 |
| 49 | Monthwise due report | 2013-01-14 → 2013-01-14 09:00 | 2013-01-14 → 2013-01-14 18:00 |  |  | baseline start none → 2013-01-14 09:00; baseline finish none → 2013-01-14 18:00 |
| 50 | Student Registration Report | 2013-01-15 → 2013-01-15 09:00 | 2013-01-15 → 2013-01-15 18:00 |  |  | baseline start none → 2013-01-15 09:00; baseline finish none → 2013-01-15 18:00 |
| 51 | Design customization & CSS Implementation | 2013-01-09 → 2013-01-09 17:00 | 2013-01-24 → 2013-01-24 17:00 |  |  | baseline start none → 2013-01-09 17:00; baseline finish none → 2013-01-24 17:00 |

## Version 3 (data date 2012-12-23, saved 2013-01-07, file ProjectPlan-ProgotiSystems-AgraniSchoolPaymentManagement-V-1.2.mpp)

Last finish stays 2013-02-06. Complete tasks 22 → 25.

Added:

| ID | Task | Duration | Start | Finish | Resources |
| --- | --- | --- | --- | --- | --- |
| 52 | Implement new layout in User | 3d | 2013-01-09 | 2013-01-14 | Md. Afzalur Rashid [30%] |
| 53 | Implement new layout in Student | 3d | 2013-01-09 | 2013-01-14 | Khadija Ashraf |
| 54 | Implement new layout in Fees Rule | 3h | 2013-01-09 | 2013-01-10 |  |
| 55 | Implement new layout in fees profile | 3h | 2013-01-09 | 2013-01-10 |  |
| 56 | Implement new layout in entire configuration menu | 3d | 2013-01-09 | 2013-01-14 |  |
| 57 | Implement new design in ACL except user | 2d | 2013-01-09 | 2013-01-13 |  |

Changed:

| ID | Task | Start | Finish | Duration | Complete | Total float | Other |
| --- | --- | --- | --- | --- | --- | --- | --- |
| 1 | **Agrani School Payment Management System** | 2012-12-01 09:00 A → 2012-12-01 A | 2013-02-06 18:00 → 2013-02-06 |  | 28% → 33% |  | baseline start 2012-12-01 09:00 → 2012-12-01; baseline finish 2013-02-06 18:00 → 2013-02-06 |
| 2 | **Web Apps** | 2012-12-01 09:00 A → 2012-12-01 A | 2013-01-09 17:00 → 2013-01-09 |  |  |  | baseline start 2012-12-01 09:00 → 2012-12-01; baseline finish 2013-01-09 17:00 → 2013-01-09 |
| 3 | Initiate project & preparation | 2012-12-01 09:00 A → 2012-12-01 A | 2012-12-04 18:00 A → 2012-12-04 A |  |  |  | constraint start no earlier than 2012-12-05 09:00 → start no earlier than 2012-12-05; baseline start 2012-12-01 09:00 → 2012-12-01; baseline finish 2012-12-04 18:00 → 2012-12-04 |
| 4 | Domain creation & Database schema generation | 2012-12-05 09:00 A → 2012-12-05 A | 2012-12-10 18:00 A → 2012-12-10 A |  |  |  | baseline start 2012-12-05 09:00 → 2012-12-05; baseline finish 2012-12-10 18:00 → 2012-12-10 |
| 5 | Academic Year/Session Management | 2012-12-11 09:00 A → 2012-12-11 A | 2012-12-11 18:00 A → 2012-12-11 A |  |  |  | baseline start 2012-12-11 09:00 → 2012-12-11; baseline finish 2012-12-11 18:00 → 2012-12-11 |
| 6 | School Management | 2012-12-12 09:00 A → 2012-12-12 A | 2012-12-12 18:00 A → 2012-12-12 A |  |  |  | baseline start 2012-12-12 09:00 → 2012-12-12; baseline finish 2012-12-12 18:00 → 2012-12-12 |
| 7 | User Group Management | 2013-01-03 12:48 A → 2013-01-03 A | 2013-01-06 12:48 A → 2013-01-06 A |  |  |  | baseline start 2013-01-03 12:48 → 2013-01-03; baseline finish 2013-01-06 12:48 → 2013-01-06 |
| 8 | **User Management** | 2012-12-13 09:00 A → 2012-12-13 A | 2012-12-23 15:00 A → 2012-12-23 A |  |  |  | baseline start 2012-12-13 09:00 → 2012-12-13; baseline finish 2012-12-23 15:00 → 2012-12-23 |
| 9 | Tuneup view | 2012-12-23 09:00 A → 2012-12-23 A | 2012-12-23 12:00 A → 2012-12-23 A |  |  |  | constraint start no earlier than 2012-12-23 09:00 → start no earlier than 2012-12-23; baseline start 2012-12-23 09:00 → 2012-12-23; baseline finish 2012-12-23 12:00 → 2012-12-23 |
| 10 | Controller | 2012-12-13 09:00 A → 2012-12-13 A | 2012-12-13 12:00 A → 2012-12-13 A |  |  |  | baseline start 2012-12-13 09:00 → 2012-12-13; baseline finish 2012-12-13 12:00 → 2012-12-13 |
| 11 | User Service | 2012-12-23 12:00 A → 2012-12-23 A | 2012-12-23 15:00 A → 2012-12-23 A |  |  |  | baseline start 2012-12-23 12:00 → 2012-12-23; baseline finish 2012-12-23 15:00 → 2012-12-23 |
| 12 | **Authority(Role) Management** | 2012-12-13 09:00 A → 2012-12-13 A | 2012-12-24 15:00 → 2012-12-24 |  |  | 9.12d → 30.38d | baseline start 2012-12-13 09:00 → 2012-12-13; baseline finish 2012-12-24 15:00 → 2012-12-24 |
| 13 | View creation | 2012-12-24 09:00 A → 2012-12-24 A | 2012-12-24 12:00 A → 2012-12-24 A |  |  |  | constraint start no earlier than 2012-12-24 09:00 → start no earlier than 2012-12-24; baseline start 2012-12-24 09:00 → 2012-12-24; baseline finish 2012-12-24 12:00 → 2012-12-24 |
| 14 | Controller | 2012-12-13 09:00 A → 2012-12-13 A | 2012-12-13 12:00 A → 2012-12-13 A |  |  |  | baseline start 2012-12-13 09:00 → 2012-12-13; baseline finish 2012-12-13 12:00 → 2012-12-13 |
| 15 | Service | 2012-12-24 12:00 → 2012-12-24 | 2012-12-24 15:00 → 2012-12-24 |  |  | 9.12d → 30.38d | baseline start 2012-12-24 12:00 → 2012-12-24; baseline finish 2012-12-24 15:00 → 2012-12-24 |
| 16 | Authority Assignment | 2012-12-24 15:00 A → 2012-12-24 A | 2012-12-24 17:00 A → 2012-12-24 A |  |  |  | baseline start 2012-12-24 15:00 → 2012-12-24; baseline finish 2012-12-24 17:00 → 2012-12-24 |
| 17 | Feature Management | 2012-12-24 17:00 A → 2012-12-24 A | 2012-12-27 17:00 A → 2012-12-27 A |  |  |  | baseline start 2012-12-24 17:00 → 2012-12-24; baseline finish 2012-12-27 17:00 → 2012-12-27 |
| 18 | Feature Assigment | 2012-12-27 17:00 A → 2012-12-27 A | 2012-12-31 17:00 A → 2012-12-31 A |  |  |  | baseline start 2012-12-27 17:00 → 2012-12-27; baseline finish 2012-12-31 17:00 → 2012-12-31 |
| 19 | Class Management | 2012-12-17 09:00 A → 2012-12-17 A | 2012-12-17 13:00 A → 2012-12-17 A |  |  |  | baseline start 2012-12-17 09:00 → 2012-12-17; baseline finish 2012-12-17 13:00 → 2012-12-17 |
| 20 | Section Management | 2012-12-18 09:00 A → 2012-12-18 A | 2012-12-18 12:00 A → 2012-12-18 A |  |  |  | baseline start 2012-12-18 09:00 → 2012-12-18; baseline finish 2012-12-18 12:00 → 2012-12-18 |
| 21 | Subject Group management | 2013-01-02 12:48 → 2013-01-02 | 2013-01-03 12:48 → 2013-01-03 |  |  |  | baseline start 2013-01-02 12:48 → 2013-01-02; baseline finish 2013-01-03 12:48 → 2013-01-03 |
| 22 | **Fees Profile Management** | 2012-12-17 09:00 A → 2012-12-17 A | 2013-01-02 12:48 A → 2013-01-02 A |  |  |  | baseline start 2012-12-17 09:00 → 2012-12-17; baseline finish 2013-01-02 12:48 → 2013-01-02 |
| 23 | Fees Type | 2012-12-19 09:00 A → 2012-12-19 A | 2012-12-19 13:00 A → 2012-12-19 A |  |  |  | baseline start 2012-12-19 09:00 → 2012-12-19; baseline finish 2012-12-19 13:00 → 2012-12-19 |
| 24 | Fees Rule | 2012-12-19 09:00 A → 2012-12-19 A | 2012-12-19 13:00 A → 2012-12-19 A |  |  |  | baseline start 2012-12-19 09:00 → 2012-12-19; baseline finish 2012-12-19 13:00 → 2012-12-19 |
| 25 | Fees Profile | 2012-12-20 09:00 A → 2012-12-20 A | 2012-12-20 13:00 A → 2012-12-20 A |  |  |  | baseline start 2012-12-20 09:00 → 2012-12-20; baseline finish 2012-12-20 13:00 → 2012-12-20 |
| 26 | Fees Profile Allocation | 2012-12-17 09:00 A → 2012-12-17 A | 2013-01-02 12:48 A → 2013-01-02 A |  |  |  | baseline start 2012-12-17 09:00 → 2012-12-17; baseline finish 2013-01-02 12:48 → 2013-01-02 |
| 27 | **Student Management** | 2012-12-24 17:00 A → 2012-12-24 A | 2013-01-09 17:00 → 2013-01-09 |  |  | 9.12d → 16.12d | baseline start 2012-12-24 17:00 → 2012-12-24; baseline finish 2013-01-09 17:00 → 2013-01-09 |
| 28 | Student Registration | 2012-12-24 17:00 A → 2012-12-24 A | 2012-12-27 17:00 A → 2012-12-27 A |  |  |  | baseline start 2012-12-24 17:00 → 2012-12-24; baseline finish 2012-12-27 17:00 → 2012-12-27 |
| 29 | Class,Section,Fees Profile assignment | 2012-12-27 17:00 A → 2012-12-27 A | 2012-12-31 17:00 A → 2012-12-31 A |  |  |  | baseline start 2012-12-27 17:00 → 2012-12-27; baseline finish 2012-12-31 17:00 → 2012-12-31 |
| 30 | **Migration** | 2012-12-31 17:00 → 2012-12-31 | 2013-01-09 17:00 → 2013-01-09 |  |  | 9.12d → 16.12d | baseline start 2012-12-31 17:00 → 2012-12-31; baseline finish 2013-01-09 17:00 → 2013-01-09 |
| 31 | Individual Student migration | 2012-12-31 17:00 → 2012-12-31 | 2013-01-02 17:00 → 2013-01-02 |  |  | 9.12d → 16.12d | baseline start 2012-12-31 17:00 → 2012-12-31; baseline finish 2013-01-02 17:00 → 2013-01-02 |
| 32 | Groupwise migration | 2013-01-02 17:00 → 2013-01-02 | 2013-01-09 17:00 → 2013-01-09 |  |  | 9.12d → 16.12d | baseline start 2013-01-02 17:00 → 2013-01-02; baseline finish 2013-01-09 17:00 → 2013-01-09 |
| 33 | **RESTFul Webservice Management** | 2012-12-18 09:00 A → 2012-12-18 A | 2013-01-06 18:00 → 2013-01-06 |  | 38% → 62% | 0d → 2d | baseline start 2012-12-18 09:00 → 2012-12-18; baseline finish 2013-01-06 18:00 → 2013-01-06 |
| 34 | Setup project and Preparation | 2012-12-18 09:00 A → 2012-12-18 A | 2012-12-20 18:00 A → 2012-12-20 A |  |  |  | constraint start no earlier than 2012-12-18 09:00 → start no earlier than 2012-12-18; baseline start 2012-12-18 09:00 → 2012-12-18; baseline finish 2012-12-20 18:00 → 2012-12-20 |
| 35 | Webservice for tuition fees payment | 2012-12-23 09:00 A → 2012-12-23 A | 2012-12-24 18:00 → 2012-12-24 A |  | 50% → 100% | 0.9d → none | baseline start 2012-12-23 09:00 → 2012-12-23; baseline finish 2012-12-24 18:00 → 2012-12-24 |
| 36 | Web service for other fees payment | 2012-12-26 09:00 A → 2012-12-26 A | 2012-12-26 18:00 → 2012-12-26 A |  | 40% → 100% | 0.5d → none | baseline start 2012-12-26 09:00 → 2012-12-26; baseline finish 2012-12-26 18:00 → 2012-12-26 |
| 37 | Fine management | 2012-12-27 09:00 A → 2012-12-27 A | 2012-12-30 18:00 → 2012-12-30 A |  | 25% → 100% | 0d → none | baseline start 2012-12-27 09:00 → 2012-12-27; baseline finish 2012-12-30 18:00 → 2012-12-30 |
| 38 | Web service for external component / transaction report | 2012-12-31 09:00 → 2012-12-31 | 2013-01-06 18:00 → 2013-01-06 |  |  | 0d → 2d | baseline start 2012-12-31 09:00 → 2012-12-31; baseline finish 2013-01-06 18:00 → 2013-01-06 |
| 39 | **Dashboard management** | 2013-01-16 09:00 → 2013-01-16 | 2013-02-06 18:00 → 2013-02-06 |  |  |  | baseline start 2013-01-16 09:00 → 2013-01-16; baseline finish 2013-02-06 18:00 → 2013-02-06 |
| 40 | CSS & Layout Management | 2013-01-16 09:00 → 2013-01-16 | 2013-01-20 18:00 → 2013-01-20 |  |  |  | baseline start 2013-01-16 09:00 → 2013-01-16; baseline finish 2013-01-20 18:00 → 2013-01-20 |
| 41 | Admin dashboard amanagement | 2013-01-22 09:00 → 2013-01-22 | 2013-01-23 18:00 → 2013-01-23 |  |  |  | baseline start 2013-01-22 09:00 → 2013-01-22; baseline finish 2013-01-23 18:00 → 2013-01-23 |
| 42 | Teacher & Employee Dashboard | 2013-01-24 09:00 → 2013-01-24 | 2013-01-27 18:00 → 2013-01-27 |  |  |  | baseline start 2013-01-24 09:00 → 2013-01-24; baseline finish 2013-01-27 18:00 → 2013-01-27 |
| 43 | Clerk dashboard | 2013-01-28 09:00 → 2013-01-28 | 2013-01-28 18:00 → 2013-01-28 |  |  |  | baseline start 2013-01-28 09:00 → 2013-01-28; baseline finish 2013-01-28 18:00 → 2013-01-28 |
| 44 | Generic Dashboard | 2013-01-29 09:00 → 2013-01-29 | 2013-02-03 18:00 → 2013-02-03 |  |  |  | baseline start 2013-01-29 09:00 → 2013-01-29; baseline finish 2013-02-03 18:00 → 2013-02-03 |
| 45 | Dashboard Customization | 2013-02-04 09:00 → 2013-02-04 | 2013-02-06 18:00 → 2013-02-06 |  |  |  | baseline start 2013-02-04 09:00 → 2013-02-04; baseline finish 2013-02-06 18:00 → 2013-02-06 |
| 46 | **Reports** | 2013-01-07 09:00 → 2013-01-07 A | 2013-01-15 18:00 → 2013-01-15 |  | 0% → 29% |  | baseline start 2013-01-07 09:00 → 2013-01-07; baseline finish 2013-01-15 18:00 → 2013-01-15 |
| 47 | Generic Report based on Group,Section,Class,Student, fees type and duration | 2013-01-07 09:00 → 2013-01-07 A | 2013-01-10 18:00 → 2013-01-10 |  | 0% → 50% |  | baseline start 2013-01-07 09:00 → 2013-01-07; baseline finish 2013-01-10 18:00 → 2013-01-10 |
| 48 | Monthwise fees collection report | 2013-01-13 09:00 → 2013-01-13 | 2013-01-13 18:00 → 2013-01-13 |  |  |  | baseline start 2013-01-13 09:00 → 2013-01-13; baseline finish 2013-01-13 18:00 → 2013-01-13 |
| 49 | Monthwise due report | 2013-01-14 09:00 → 2013-01-14 | 2013-01-14 18:00 → 2013-01-14 |  |  |  | baseline start 2013-01-14 09:00 → 2013-01-14; baseline finish 2013-01-14 18:00 → 2013-01-14 |
| 50 | Student Registration Report | 2013-01-15 09:00 → 2013-01-15 | 2013-01-15 18:00 → 2013-01-15 |  |  |  | baseline start 2013-01-15 09:00 → 2013-01-15; baseline finish 2013-01-15 18:00 → 2013-01-15 |
| 51 | **Design customization & CSS Implementation** | 2013-01-09 17:00 → 2013-01-09 A | 2013-01-24 17:00 → 2013-01-14 (-10d) | 10d → 3d |  | 9.12d → 16.12d | baseline start 2013-01-09 17:00 → 2013-01-09; baseline finish 2013-01-24 17:00 → 2013-01-24 |
| 58 | **Testing** | 2012-12-24 17:00 → 2012-12-27 (+3d) | 2013-01-23 15:00 → 2013-01-24 (+1d) |  |  | 10.38d → 9.25d | baseline start 2012-12-24 17:00 → 2012-12-24; baseline finish 2013-01-23 15:00 → 2013-01-23 |
| 59 | **Prepare Test Cases** | 2012-12-24 17:00 → 2012-12-27 (+3d) | 2013-01-23 15:00 → 2013-01-24 (+1d) |  |  | 10.38d → 9.25d | baseline start 2012-12-24 17:00 → 2012-12-24; baseline finish 2013-01-23 15:00 → 2013-01-23 |
| 60 | **Prepare Test Case for ACL** | 2012-12-24 17:00 → 2012-12-27 (+3d) | 2012-12-27 15:00 → 2012-12-30 (+3d) |  |  | 10.38d → 9.25d | baseline start 2012-12-24 17:00 → 2012-12-24; baseline finish 2012-12-27 15:00 → 2012-12-27 |
| 61 | Test case for User | 2012-12-24 17:00 → 2012-12-27 (+3d) | 2012-12-26 11:00 → 2012-12-27 (+1d) |  |  | 10.38d → 9.25d | constraint none → start no earlier than 2012-12-27; baseline start 2012-12-24 17:00 → 2012-12-24; baseline finish 2012-12-26 11:00 → 2012-12-26 |
| 62 | Test case for Authority | 2012-12-26 11:00 → 2012-12-27 (+1d) | 2012-12-26 15:00 → 2012-12-27 (+1d) |  |  | 10.38d → 9.25d | baseline start 2012-12-26 11:00 → 2012-12-26; baseline finish 2012-12-26 15:00 → 2012-12-26 |
| 63 | Test Case for login & authentication | 2012-12-26 15:00 → 2012-12-27 (+1d) | 2012-12-27 15:00 → 2012-12-30 (+3d) |  |  | 10.38d → 9.25d | baseline start 2012-12-26 15:00 → 2012-12-26; baseline finish 2012-12-27 15:00 → 2012-12-27 |
| 64 | **Prepare Test Case for School Management** | 2012-12-30 15:00 → 2012-12-31 (+1d) | 2013-01-01 15:00 → 2013-01-02 (+1d) |  |  | 10.38d → 9.25d | baseline start 2012-12-30 15:00 → 2012-12-30; baseline finish 2013-01-01 15:00 → 2013-01-01 |
| 65 | Test case for academic year/session | 2012-12-30 15:00 → 2012-12-31 (+1d) | 2012-12-30 16:00 → 2012-12-31 (+1d) |  |  | 10.38d → 9.25d | baseline start 2012-12-30 15:00 → 2012-12-30; baseline finish 2012-12-30 16:00 → 2012-12-30 |
| 66 | Test Case for School | 2012-12-30 16:00 → 2012-12-31 (+1d) | 2012-12-30 18:00 → 2013-01-01 (+2d) |  |  | 10.38d → 9.25d | baseline start 2012-12-30 16:00 → 2012-12-30; baseline finish 2012-12-30 18:00 → 2012-12-30 |
| 67 | Test Case for Fees profile | 2012-12-31 09:00 → 2013-01-01 (+1d) | 2012-12-31 15:00 → 2013-01-01 (+1d) |  |  | 10.38d → 9.25d | baseline start 2012-12-31 09:00 → 2012-12-31; baseline finish 2012-12-31 15:00 → 2012-12-31 |
| 68 | Test Case for Student Registration | 2012-12-31 15:00 → 2013-01-01 (+1d) | 2013-01-01 15:00 → 2013-01-02 (+1d) |  |  | 10.38d → 9.25d | baseline start 2012-12-31 15:00 → 2012-12-31; baseline finish 2013-01-01 15:00 → 2013-01-01 |
| 69 | **Prepare Test Cases for Web Service** | 2013-01-03 15:00 → 2013-01-06 (+3d) | 2013-01-08 15:00 → 2013-01-09 (+1d) |  |  | 10.38d → 9.25d | baseline start 2013-01-03 15:00 → 2013-01-03; baseline finish 2013-01-08 15:00 → 2013-01-08 |
| 70 | Test Case for Tuition fees web service | 2013-01-03 15:00 → 2013-01-06 (+3d) | 2013-01-06 15:00 → 2013-01-07 (+1d) |  |  | 10.38d → 9.25d | baseline start 2013-01-03 15:00 → 2013-01-03; baseline finish 2013-01-06 15:00 → 2013-01-06 |
| 71 | Test Case for Exam fee & other web service | 2013-01-06 15:00 → 2013-01-07 (+1d) | 2013-01-07 15:00 → 2013-01-08 (+1d) |  |  | 10.38d → 9.25d | baseline start 2013-01-06 15:00 → 2013-01-06; baseline finish 2013-01-07 15:00 → 2013-01-07 |
| 72 | Test Case for external usagable web service | 2013-01-07 15:00 → 2013-01-08 (+1d) | 2013-01-08 15:00 → 2013-01-09 (+1d) |  |  | 10.38d → 9.25d | baseline start 2013-01-07 15:00 → 2013-01-07; baseline finish 2013-01-08 15:00 → 2013-01-08 |
| 73 | **Prepare Test Case for reports** | 2013-01-08 15:00 → 2013-01-09 (+1d) | 2013-01-09 15:00 → 2013-01-10 (+1d) |  |  | 10.38d → 9.25d | baseline start 2013-01-08 15:00 → 2013-01-08; baseline finish 2013-01-09 15:00 → 2013-01-09 |
| 74 | Test Case for generic reports | 2013-01-08 15:00 → 2013-01-09 (+1d) | 2013-01-08 18:00 → 2013-01-10 (+2d) |  |  | 10.38d → 9.25d | baseline start 2013-01-08 15:00 → 2013-01-08; baseline finish 2013-01-08 18:00 → 2013-01-08 |
| 75 | Test case for teacher wise reports | 2013-01-09 09:00 → 2013-01-10 (+1d) | 2013-01-09 11:00 → 2013-01-10 (+1d) |  |  | 10.38d → 9.25d | baseline start 2013-01-09 09:00 → 2013-01-09; baseline finish 2013-01-09 11:00 → 2013-01-09 |
| 76 | Test Case for Student Registration Report | 2013-01-09 11:00 → 2013-01-10 (+1d) | 2013-01-09 15:00 → 2013-01-10 (+1d) |  |  | 10.38d → 9.25d | baseline start 2013-01-09 11:00 → 2013-01-09; baseline finish 2013-01-09 15:00 → 2013-01-09 |

| ID | Task | Start | Finish | Total float | Other |
| --- | --- | --- | --- | --- | --- |
| 77 | **Prepare Test Case for Dashboard** | 2013-01-09 15:00 → 2013-01-10 (+1d) | 2013-01-15 15:00 → 2013-01-16 (+1d) | 10.38d → 9.25d | baseline start 2013-01-09 15:00 → 2013-01-09; baseline finish 2013-01-15 15:00 → 2013-01-15 |
| 78 | Test Case for Admin Dashboard | 2013-01-09 15:00 → 2013-01-10 (+1d) | 2013-01-09 18:00 → 2013-01-13 (+4d) | 10.38d → 9.25d | baseline start 2013-01-09 15:00 → 2013-01-09; baseline finish 2013-01-09 18:00 → 2013-01-09 |
| 79 | Test Case for Teacher Dashboard | 2013-01-10 09:00 → 2013-01-13 (+3d) | 2013-01-10 12:00 → 2013-01-13 (+3d) | 10.38d → 9.25d | baseline start 2013-01-10 09:00 → 2013-01-10; baseline finish 2013-01-10 12:00 → 2013-01-10 |
| 80 | Test Case for Clerk Dahsboard | 2013-01-10 12:00 → 2013-01-13 (+3d) | 2013-01-10 15:00 → 2013-01-13 (+3d) | 10.38d → 9.25d | baseline start 2013-01-10 12:00 → 2013-01-10; baseline finish 2013-01-10 15:00 → 2013-01-10 |
| 81 | Test Case for Generic Dashboard | 2013-01-10 15:00 → 2013-01-13 (+3d) | 2013-01-13 15:00 → 2013-01-14 (+1d) | 10.38d → 9.25d | baseline start 2013-01-10 15:00 → 2013-01-10; baseline finish 2013-01-13 15:00 → 2013-01-13 |
| 82 | Test Case for Dashboard customization | 2013-01-13 15:00 → 2013-01-14 (+1d) | 2013-01-15 15:00 → 2013-01-16 (+1d) | 10.38d → 9.25d | baseline start 2013-01-13 15:00 → 2013-01-13; baseline finish 2013-01-15 15:00 → 2013-01-15 |
| 83 | Prepare Test Case for User Interface | 2013-01-15 15:00 → 2013-01-16 (+1d) | 2013-01-23 15:00 → 2013-01-24 (+1d) | 10.38d → 9.25d | baseline start 2013-01-15 15:00 → 2013-01-15; baseline finish 2013-01-23 15:00 → 2013-01-23 |
| 84 | **Perform Test for Phase** | 2012-12-27 15:00 → 2012-12-30 (+3d) | 2013-01-16 15:00 → 2013-01-17 (+1d) | 10.38d → 9.25d | baseline start 2012-12-27 15:00 → 2012-12-27; baseline finish 2013-01-16 15:00 → 2013-01-16 |
| 85 | Perform Test for ACL | 2012-12-27 15:00 → 2012-12-30 (+3d) | 2012-12-30 15:00 → 2012-12-31 (+1d) | 10.38d → 9.25d | baseline start 2012-12-27 15:00 → 2012-12-27; baseline finish 2012-12-30 15:00 → 2012-12-30 |
| 86 | Perform Test for School Management | 2013-01-01 15:00 → 2013-01-02 (+1d) | 2013-01-03 15:00 → 2013-01-06 (+3d) | 10.38d → 9.25d | baseline start 2013-01-01 15:00 → 2013-01-01; baseline finish 2013-01-03 15:00 → 2013-01-03 |
| 87 | Perform Test for Web Service | 2013-01-08 15:00 → 2013-01-09 (+1d) | 2013-01-13 15:00 → 2013-01-14 (+1d) | 14.38d → 13.25d | baseline start 2013-01-08 15:00 → 2013-01-08; baseline finish 2013-01-13 15:00 → 2013-01-13 |
| 88 | Perform Test For report | 2013-01-13 15:00 → 2013-01-14 (+1d) | 2013-01-16 15:00 → 2013-01-17 (+1d) | 14.38d → 13.25d | baseline start 2013-01-13 15:00 → 2013-01-13; baseline finish 2013-01-16 15:00 → 2013-01-16 |
